# CertifDiplo-V1

Schedule from MS Project, 2022-02-07 to 2022-03-17, A marks actual dates.

## Calendars

- Estándar: Mon-Fri 09:00-13:00, 15:00-19:00; Sat-Sun off.

## Schedule

| ID | WBS | Task | Duration | Start | Finish | Predecessors | Complete | Remaining | Total slack | Free slack |
| --- | --- | --- | --- | --- | --- | --- | --- | --- | --- | --- |
| 1 | 1 | **Diplomas y Certificados V1** | 29d | 2022-02-07 A | 2022-03-17 |  | 5% | 27.65d | 0d |  |
| 2 | 1.1 | **Panel de Usuario** | 8d | 2022-02-07 A | 2022-02-16 |  | 17% | 6.65d | 0d |  |
| 3 | 1.1.1 | Acceso de Usuario | 1d | 2022-02-07 A | 2022-02-07 |  | 20% | 0.8d | 0.1d | 0d |
| 4 | 1.1.2 | Home | 1d | 2022-02-08 A | 2022-02-08 | 3 | 10% | 0.9d | 0.2d | 0d |
| 5 | 1.1.3 | Mis Cursos | 2d | 2022-02-09 A | 2022-02-10 | 4 | 10% | 1.8d | 0.75d | 0d |
| 6 | 1.1.4 | Ver Certificado | 3d | 2022-02-11 A | 2022-02-15 | 5 | 25% | 2.25d | 0.1d | 0d |
| 7 | 1.1.5 | Perfil | 1d | 2022-02-16 A | 2022-02-16 | 6 | 10% | 0.9d | 0d |  |
| 8 | 1.2 | **panel de Administrador** | 14d | 2022-02-17 | 2022-03-08 |  |  |  | 0d |  |
| 9 | 1.2.1 | Acceso de Administrador | 1d | 2022-02-17 | 2022-02-17 | 7 |  |  | 0d |  |
| 10 | 1.2.2 | Home | 1d | 2022-02-18 | 2022-02-18 | 9 |  |  | 0d |  |
| 11 | 1.2.3 | Mantenimiento de Cursos | 2d | 2022-02-21 | 2022-02-22 | 10 |  |  | 0d |  |
| 12 | 1.2.4 | Mantenimiento de Categorías | 2d | 2022-02-23 | 2022-02-24 | 11 |  |  | 0d |  |
| 13 | 1.2.5 | Mantenimiento de Instructores | 2d | 2022-02-25 | 2022-02-28 | 12 |  |  | 0d |  |
| 14 | 1.2.6 | mantenimiento de Usuarios | 2d | 2022-03-01 | 2022-03-02 | 13 |  |  | 0d |  |
| 15 | 1.2.7 | Detalle de Certificados | 3d | 2022-03-03 | 2022-03-07 | 14 |  |  | 0d |  |
| 16 | 1.2.8 | Perfil | 1d | 2022-03-08 | 2022-03-08 | 15 |  |  | 0d |  |
| 17 | 1.3 | **Pruebas** | 7d | 2022-03-09 | 2022-03-17 |  |  |  |  |  |
| 18 | 1.3.1 | Pruebas con el Cliente | 5d | 2022-03-09 | 2022-03-15 | 16 |  |  | 0d |  |
| 19 | 1.3.2 | Observaciones y Correcciones | 2d | 2022-03-16 | 2022-03-17 | 18 |  |  | 0d |  |
